# Implementación de los sistemas Easy Retail y Contpaq i

How a schedule from GanttProject changed from version to version. A marks actual dates.

## Version 1 (saved 2016-12-06)

Note of the change: otros

| ID | WBS | Task | Duration | Start | Finish | Complete | Constraint |
| --- | --- | --- | --- | --- | --- | --- | --- |
| 1 |  | Desarrollos de Join Data | 20d | 2015-11-27 | 2015-12-17 | 100% |  |
| 2 |  | Descarga de los sistemas Contpaq i | 1d | 2015-11-30 | 2015-11-30 | 100% |  |
| 3 |  | Instalación Contpaq i Contabilidad | 5d | 2015-12-08 | 2015-12-13 | 100% |  |
| 4 |  | Instalación Contpaq i Bancos | 5d | 2015-12-08 | 2015-12-13 | 100% |  |
| 5 |  | Instalación Contpaq i Nominas | 5d | 2015-12-08 | 2015-12-13 | 100% |  |
| 6 |  | Instalación Contpaq i XML en linea | 5d | 2015-12-08 | 2015-12-13 | 100% |  |
| 7 |  | Instalación Easy Retail Admin | 1d | 2015-12-09 | 2015-12-09 | 100% |  |
| 8 |  | Activación de sistemas de Contpaq i | 1d | 2015-12-16 | 2015-12-16 | 100% |  |
| 9 |  | Carga de la información de Contpaq i Nomina | 17d | 2015-12-17 | 2016-01-04 | 100% |  |
| 10 |  | Capacitación Presencial Contabilidad | 1d | 2015-12-18 | 2015-12-18 | 100% |  |
| 11 |  | Capacitación Presencial Bancos | 1d | 2015-12-18 | 2015-12-18 | 100% |  |
| 12 |  | Capacitación Presencial Nomina | 1d | 2015-12-19 | 2015-12-19 | 100% |  |
| 13 |  | Capacitación Presencial XML en linea | 1d | 2015-12-19 | 2015-12-19 | 100% |  |
| 14 |  | Capacitación Presencial Easy Retail Admin | 3d | 2015-12-21 | 2015-12-23 | 100% |  |
| 15 |  | Implementación de JD entre ERA - Contabilidad | 1d | 2015-12-07 | 2015-12-07 | 100% |  |
| 16 |  | Implementación de JD entre ERA - Bancos | 1d | 2015-12-07 | 2015-12-07 | 100% |  |
| 17 | 17 | **Desarrollo personalizado ERA** | 22d | 2016-01-04 | 2016-01-25 | 100% |  |
| 18 |  | Activos seleccionados por partida en los documentos (Compras, Ventas, Entradas y salidas de inventario). | 15d | 2016-01-04 | 2016-01-18 | 100% |  |
| 19 |  | Filtros en reporte de Clientes y Activos por serie. | 22d | 2016-01-04 | 2016-01-25 | 100% |  |
| 20 |  | Cuenta contable asignable por activo y por partida, que se muestre el catálogo de cuentas en compras y ventas. | 22d | 2016-01-04 | 2016-01-25 | 100% |  |
| 21 |  | Permitir aplicar un pago por concepto a varios documentos. | 1d | 2016-01-04 | 2016-01-04 | 100% |  |
| 22 |  | Permitir aplicar varios impuestos y retenciones por partida. | 15d | 2016-01-04 | 2016-01-18 | 100% |  |
| 23 |  | Permitir aplicar impuestos y retenciones porcentual o por un factor. | 15d | 2016-01-04 | 2016-01-18 | 100% |  |
| 24 |  | Reporte de CXC y CXP por folio de banco. | 22d | 2016-01-04 | 2016-01-25 | 100% |  |
| 25 |  | Permisos en CXC y CXP por usuario (visualizar, abonar) | 22d | 2016-01-04 | 2016-01-25 | 100% |  |
| 26 |  | Personalización en la frecuencia de las pólizas en el JD de ERA-CCON. | 15d | 2016-01-04 | 2016-01-18 | 100% |  |
| 27 |  | Importación de ventas diarias de Excel a ERA | 15d | 2016-01-04 | 2016-01-18 | 100% |  |
| 28 |  | Carga de información a Contpaq i Contabilidad | 15d | 2016-01-04 | 2016-01-18 | 100% |  |
| 29 |  | Configuración de Layout para dispersión de nomina | 4d | 2016-01-10 | 2016-01-13 | 100% |  |
| 30 |  | Interfaz CNOM -> CCON | 8d | 2016-02-12 | 2016-02-19 | 100% |  |
| 31 |  | Desarrollo e implementación para 4 decimales en ERA | 63d | 2016-04-04 | 2016-06-06 | 100% |  |
| 32 |  | Falta poner el logo en las órdenes de compra para distinguir de qué empresa son | 3d | 2016-05-02 | 2016-05-04 | 100% |  |
| 33 |  | En la impresión de la compra, poner cuenta y activo al que se asignó | 3d | 2016-05-02 | 2016-05-04 | 100% |  |
| 34 |  | En la parte de pagos de nota, para revisar los abonos pone todos y no los del cliente que se requiere pagar. | 2d | 2016-05-03 | 2016-05-04 | 100% |  |
| 35 |  | Crear un reporte de pagos para CXC donde muestre los pagos realizados por cada documento, filtrado por los mismo que CXC excepto estado y folio banco (Usar tablas documentos_pagos y movimientos_pagos) | 3d | 2016-05-03 | 2016-05-05 | 100% |  |
| 36 |  | En los reportes solo muestra el encabezado en la primera página. | 3d | 2016-05-16 | 2016-05-18 | 100% |  |
| 37 |  | Corrección en la forma de pago PAGO EN UNA SOLA EXHIBICIÓN - Que sea solo en mayúsculas - Sin acentos | 1d | 2016-05-19 | 2016-05-19 | 100% |  |
| 38 |  | Agregar fecha y hora de creación a los reportes. | 3d | 2016-05-21 | 2016-05-23 | 100% |  |
| 39 |  | Agregar el campo de observaciones al PDF de las notas de crédito | 3d | 2016-05-23 | 2016-05-25 | 100% |  |
| 40 |  | En la ventana de pagos no hay una relación para saber que pago corresponde a un documento. | 5d | 2016-05-23 | 2016-05-27 | 100% |  |
| 41 |  | Ventana de tickets facturados. | 5d | 2016-05-23 | 2016-05-27 | 100% |  |
| 42 |  | Que aparezca el logo de la empresa en la compra. | 3d | 2016-06-04 | 2016-06-06 | 100% |  |
| 43 |  | Que al momento de hacer una factura de crédito seleccionando ticket, te pueda permitir poner observaciones en la factura, ya que actualmente no lo permite. | 5d | 2016-06-02 | 2016-06-06 | 100% |  |
| 44 |  | Integrar a la versión el nuevo catalogo de metodoPago | 11d | 2016-05-30 | 2016-06-09 | 100% |  |
| 45 |  | Los totales en el pdf de la factura no cuentan con espacio suficiente por lo que no se ven las cantidades. | 2d | 2016-06-13 | 2016-06-14 | 100% |  |
| 46 |  | No está generando el pdf de la factura cuando le da el boton de timbrar. | 2d | 2016-06-15 | 2016-06-16 | 100% |  |
| 47 |  | Eliminar la opción de Catálogo de Pagos Módulos>Ventas>Tipos de Pago | 3d | 2016-06-14 | 2016-06-16 | 100% |  |
| 48 |  | Aumentar el paginado de ventas a 100 para que se puedan facturar un rango más amplio de tickets. | 3d | 2016-06-27 | 2016-06-29 | 100% |  |
| 49 |  | Enviar al pdf de la factura la descripción del método de pago y el código al xml | 2d | 2016-06-28 | 2016-06-29 | 100% |  |
| 50 |  | En el reporte de ventas incrementar el espacio para mostrar los totales en el resumen del reporte ya que no se ve la cantidad cuando es muy grande (millones) | 4d | 2016-08-02 | 2016-08-05 | 100% |  |
| 51 |  | Que al momento de seleccionar ticket para facturar te dé un total previo para validar con lo que se quiere facturar. | 4d | 2016-08-02 | 2016-08-05 | 100% |  |
| 52 |  | Mostrar en el PDF de la factura el descuento. (PDF 0,4,6 decimales) | 23d | 2016-07-01 | 2016-07-23 | 100% |  |
| 53 |  | Captura de la información | 1d | 2016-07-26 | 2016-07-26 | 100% |  |
| 54 |  | Mostrar en el PDF de la factura el descuento. (PDF 1,2,3,5 decimales) | 3d | 2016-07-24 | 2016-07-26 | 100% |  |
| 55 |  | Agregar en el xml en el domicilio del Receptor el Codigo Postal | 5d | 2016-07-22 | 2016-07-26 | 100% |  |
| 56 |  | Que al momento de obtener un reporte de encabezados o en un reporte nuevo, nos diga los ticket que ya están facturados y con qué número y que se pueda obtener detallado o totalizado por documento | 2d | 2016-07-27 | 2016-07-28 | 100% |  |
| 57 |  | Que al momento de obtener un reporte de encabezados o en un reporte nuevo, nos diga los ticket que ya están facturados y con qué número y que se pueda obtener detallado o totalizado por documento | 4d | 2016-08-02 | 2016-08-05 | 100% |  |
| 58 | 48 | **Desarrollo personalizado ERA** | 16d | 2016-08-04 | 2016-08-19 | 72% | start no earlier than 2016-08-04 |
| 59 |  | Habilitar en el reporte de antigüedad de saldos el filtro por serie-documento | 3d | 2016-08-08 | 2016-08-10 | 100% |  |
| 60 |  | En compras cuando se genere el JD, nos indique en la poliza el número de proveedor ademas de el número de la orden de compra | 3d | 2016-08-13 | 2016-08-15 | 100% |  |
| 61 |  | Agregar configuración para hacer obligatorio el campo de Activo y Cuenta Contable en los Pagos | 2d | 2016-08-04 | 2016-08-05 | 100% |  |
| 62 |  | Agregar el "Nombre de cliente", ademas del codigo, en los reportes de ventas | 10d | 2016-08-10 | 2016-08-19 | 50% |  |

## Version 2 (saved 2016-12-12)

Note of the change: Merge branch 'master' of https://github.com/ricardo-novelasos/SOSQTP

Last finish 2016-08-19 → 2016-11-16 (+89d). Complete tasks 59 → 61.

Added:

| ID | Task | Duration | Start | Finish |
| --- | --- | --- | --- | --- |
| 51 | Error numero de columnas no coincide con el numero de valores a insertar | 1d | 2016-07-13 | 2016-07-13 |
| 64 | Revisar que al generar las pólizas no se generen con cuenta de cuadre | 1d | 2016-09-13 | 2016-09-13 |
| 65 | Revisar que se calcule correctamente el IVA cuando se facturan tickets | 1d | 2016-09-27 | 2016-09-27 |
| 66 | Crear un Query para que los tickets cancelados con anterioridad no se dupliquen | 1d | 2016-09-27 | 2016-09-27 |
| 67 | Reportes de antigüedad de saldos, debe filtrar por fechas para que permita ver el historial | 1d | 2016-09-13 | 2016-09-13 |
| 68 | Pruebas, crear un query para corregir las cxc que tienen doble registro en la tabla de cxc | 1d | 2016-09-13 | 2016-09-13 |
| 69 | se necesita un concepto de descuento esto para identificar los pagos de cartera | 1d | 2016-09-13 | 2016-09-13 |
| 70 | validar que al agregar mas de dos partidas no se calcule mal el importe | 1d | 2016-09-13 | 2016-09-13 |
| 71 | validar, al momento de capturar una compra respete la fecha que se captura en el registro, ocea la fecha de la factura1 | 1d | 2016-09-13 | 2016-09-13 |
| 72 | Crear mas de un asiento contable por serie para que permita la creación de una segunda poliza por evento, | 1d | 2016-09-13 | 2016-09-13 |
| 73 | validación, al agregar productos de un documento de compra a un factura que si baje los importes correctos, | 1d | 2016-11-11 | 2016-11-11 |
| 74 | Envio de correos al hacer las facturas de los tickets | 1d | 2016-11-16 | 2016-11-16 |
| 75 | el botón de timbrado debe hacer su función | 1d | 2014-08-01 | 2014-08-01 |

Changed:

| ID | Task | Finish | Duration | Complete |
| --- | --- | --- | --- | --- |
| 17 | Desarrollo personalizado ERA | 2016-01-25 → 2016-01-18 (-7d) | 22d → 15d |  |
| 59 | Desarrollo personalizado ERA | 2016-08-19 → 2016-08-06 (-13d) | 16d → 3d | 72% → 100% |

## Version 3 (saved 2016-12-20)

Note of the change: p2083

Last finish stays 2016-11-16. Complete tasks 61 → 42.

Removed: 2 Descarga de los sistemas Contpaq i; 3 Instalación Contpaq i Contabilidad; 4 Instalación Contpaq i Bancos; 5 Instalación Contpaq i Nominas; 6 Instalación Contpaq i XML en linea; 8 Activación de sistemas de Contpaq i; 9 Carga de la información de Contpaq i Nomina; 10 Capacitación Presencial Contabilidad; 11 Capacitación Presencial Bancos; 12 Capacitación Presencial Nomina; 13 Capacitación Presencial XML en linea; 14 Capacitación Presencial Easy Retail Admin; 28 Carga de información a Contpaq i Contabilidad; 29 Configuración de Layout para dispersión de nomina; 30 Interfaz CNOM -> CCON; 42 Integrar a la versión el nuevo catalogo de metodoPago; 52 Captura de la información

Changed:

| ID | Task | Finish | Duration | Complete | Other |
| --- | --- | --- | --- | --- | --- |
| 1 | Implementación de base Easy Retail Admin |  |  |  | was named Instalación Easy Retail Admin |
| 2 | Desarrollos de interfaces para bases de datos de Contpaqi Contabilidad |  |  |  | was named Desarrollos de Join Data |
| 5 | **Primera Etapa de desarrollo personalizado para base de Easy Retail Admin** | 2016-01-18 → 2016-08-05 (+200d) | 15d → 210d |  | was named Desarrollo personalizado ERA |
| 16 | Desarrollo para el manejo de 4 decimales en cantidades, totales, precio y reportes |  |  |  | was named Desarrollo e implementación para 4 decimales en ERA |
| 17 | Diseño de ordenes de compra, incluir logo para distinguir de qué empresa son |  |  |  | was named Falta poner el logo en las órdenes de compra para distinguir de qué empresa son |
| 19 | Apartado de pagos de nota, aplicar el filtro para que se puedan visualizar solo los que se necesitan pagar |  |  |  | was named En la parte de pagos de nota, para revisar los abonos pone todos y no los del cliente que se requiere pagar. |
| 21 | diseño de reportes, se debe de mostrar el encabezado en todas las paginas |  |  |  | was named En los reportes solo muestra el encabezado en la primera página. |
| 22 | Agregar los metodos de pago autorizados por el anexo 24 del SAT |  |  |  | was named Corrección en la forma de pago PAGO EN UNA SOLA EXHIBICIÓN - Que sea solo en mayúsculas - Sin acentos |
| 25 | En la ventana de pagos generar una relación entre el documento y sus pagos |  |  |  | was named En la ventana de pagos no hay una relación para saber que pago corresponde a un documento. |
| 26 | Diseñar una ventana de tickets facturados. |  |  |  | was named Ventana de tickets facturados. |
| 29 | Los totales en el pdf de la factura no cuentan con espacio suficiente por lo que no se ven las cantidades, hay que rediseñar |  |  |  | was named Los totales en el pdf de la factura no cuentan con espacio suficiente por lo que no se ven las cantidades. |
| 31 | habiliar la generación del pdf de la factura cuando se presione el boton de Timbrar. |  |  |  | was named No está generando el pdf de la factura cuando le da el boton de timbrar. |
| 42 | **Segunda Etapa de desarrollo personalizado para base Easy Retail Admin** | 2016-08-06 → 2016-11-16 (+102d) | 3d → 104d | 100% → 44% | was named Desarrollo personalizado ERA |

## Version 4 (saved 2016-12-22)

Note of the change: Merge branch 'master' of https://github.com/ricardo-novelasos/SOSQTP

Last finish 2016-11-16 → 2017-04-19 (+154d). Complete tasks 42 → 40.

Added:

| ID | Task | Duration | Start | Finish |
| --- | --- | --- | --- | --- |
| 1 | Implementación de 5 empresas | 4d | 2016-09-06 | 2016-09-09 |
| 2 | Capacitación a usuarios | 4d | 2016-09-12 | 2016-09-15 |
| 43 | Desarrollos de interfaces para bases de datos de Contpaqi Bancos | 26d | 2016-12-13 | 2017-01-09 |

Changed:

| ID | Task | Start | Finish | Duration | Complete |
| --- | --- | --- | --- | --- | --- |
| 3 | **Primera Etapa de desarrollo personalizado para base de Easy Retail Admin** | 2016-01-04 → 2016-09-05 (+245d) | 2016-08-05 → 2017-01-19 (+167d) | 210d → 132d | 100% → 99% |
| 4 | Activos seleccionados por partida en los documentos (Compras, Ventas, Entradas y salidas de inventario). | 2016-01-04 → 2016-09-12 (+252d) | 2016-01-18 → 2016-09-23 (+249d) | 15d → 11d |  |
| 5 | Filtros en reporte de Clientes y Activos por serie. | 2016-01-04 → 2016-09-12 (+252d) | 2016-01-25 → 2016-10-04 (+253d) |  |  |
| 6 | Cuenta contable asignable por activo y por partida, que se muestre el catálogo de cuentas en compras y ventas. | 2016-01-04 → 2016-09-12 (+252d) | 2016-01-25 → 2016-10-04 (+253d) |  |  |
| 7 | Permitir aplicar un pago por concepto a varios documentos. | 2016-01-04 → 2016-09-13 (+253d) | 2016-01-04 → 2016-09-13 (+253d) |  |  |
| 8 | Permitir aplicar varios impuestos y retenciones por partida. | 2016-01-04 → 2016-09-12 (+252d) | 2016-01-18 → 2016-09-27 (+253d) |  |  |
| 9 | Permitir aplicar impuestos y retenciones porcentual o por un factor. | 2016-01-04 → 2016-09-12 (+252d) | 2016-01-18 → 2016-09-27 (+253d) |  |  |
| 10 | Reporte de CXC y CXP por folio de banco. | 2016-01-04 → 2016-09-12 (+252d) | 2016-01-25 → 2016-10-04 (+253d) |  |  |
| 11 | Permisos en CXC y CXP por usuario (visualizar, abonar) | 2016-01-04 → 2016-09-12 (+252d) | 2016-01-25 → 2016-10-04 (+253d) |  |  |
| 12 | Personalización en la frecuencia de las pólizas en el JD de ERA-CCON. | 2016-01-04 → 2016-09-12 (+252d) | 2016-01-18 → 2016-09-27 (+253d) |  |  |
| 13 | Importación de ventas diarias de Excel a ERA | 2016-01-04 → 2016-09-12 (+252d) | 2016-01-18 → 2016-09-27 (+253d) |  |  |
| 14 | Desarrollo para el manejo de 4 decimales en cantidades, totales, precio y reportes | 2016-04-04 → 2016-09-12 (+161d) | 2016-06-06 → 2016-11-14 (+161d) |  |  |
| 15 | Diseño de ordenes de compra, incluir logo para distinguir de qué empresa son | 2016-05-02 → 2016-09-12 (+133d) | 2016-05-04 → 2016-09-14 (+133d) |  |  |
| 16 | En la impresión de la compra, poner cuenta y activo al que se asignó | 2016-05-02 → 2016-09-14 (+135d) | 2016-05-04 → 2016-09-17 (+136d) |  |  |
| 17 | Apartado de pagos de nota, aplicar el filtro para que se puedan visualizar solo los que se necesitan pagar | 2016-05-03 → 2016-09-15 (+135d) | 2016-05-04 → 2016-09-17 (+136d) |  |  |
| 18 | Crear un reporte de pagos para CXC donde muestre los pagos realizados por cada documento, filtrado por los mismo que CXC excepto estado y folio banco (Usar tablas documentos_pagos y movimientos_pagos) | 2016-05-03 → 2016-09-19 (+139d) | 2016-05-05 → 2016-09-21 (+139d) |  |  |
| 19 | diseño de reportes, se debe de mostrar el encabezado en todas las paginas | 2016-05-16 → 2016-10-03 (+140d) | 2016-05-18 → 2016-10-05 (+140d) |  |  |
| 20 | Agregar los metodos de pago autorizados por el anexo 24 del SAT | 2016-05-19 → 2016-10-04 (+138d) | 2016-05-19 → 2016-10-04 (+138d) |  |  |
| 21 | Agregar fecha y hora de creación a los reportes. | 2016-05-21 → 2016-10-10 (+142d) | 2016-05-23 → 2016-10-12 (+142d) |  |  |
| 22 | Agregar el campo de observaciones al PDF de las notas de crédito | 2016-05-23 → 2016-10-13 (+143d) | 2016-05-25 → 2016-10-15 (+143d) |  |  |
| 23 | En la ventana de pagos generar una relación entre el documento y sus pagos | 2016-05-23 → 2016-10-17 (+147d) | 2016-05-27 → 2016-10-21 (+147d) |  |  |
| 24 | Diseñar una ventana de tickets facturados. | 2016-05-23 → 2016-10-24 (+154d) | 2016-05-27 → 2016-10-28 (+154d) |  |  |
| 25 | Que al momento de hacer una factura de crédito seleccionando ticket, te pueda permitir poner observaciones en la factura, ya que actualmente no lo permite. | 2016-06-02 → 2016-10-31 (+151d) | 2016-06-06 → 2016-11-04 (+151d) |  |  |
| 26 | **Que aparezca el logo de la empresa en la compra.** | 2016-06-04 → 2016-09-05 (+93d) | 2016-06-06 → 2016-09-05 (+91d) | 3d → 1d |  |
| 27 | Implementación de base Easy Retail Admin | 2015-12-09 → 2016-09-05 (+271d) | 2015-12-09 → 2016-09-05 (+271d) |  |  |
| 28 | Los totales en el pdf de la factura no cuentan con espacio suficiente por lo que no se ven las cantidades, hay que rediseñar | 2016-06-13 → 2016-11-09 (+149d) | 2016-06-14 → 2016-11-10 (+149d) |  |  |
| 29 | Eliminar la opción de Catálogo de Pagos Módulos>Ventas>Tipos de Pago | 2016-06-14 → 2016-11-11 (+150d) | 2016-06-16 → 2016-11-13 (+150d) |  |  |
| 30 | habiliar la generación del pdf de la factura cuando se presione el boton de Timbrar. | 2016-06-15 → 2016-11-13 (+151d) | 2016-06-16 → 2016-11-14 (+151d) |  |  |
| 31 | Aumentar el paginado de ventas a 100 para que se puedan facturar un rango más amplio de tickets. | 2016-06-27 → 2016-11-14 (+140d) | 2016-06-29 → 2016-11-16 (+140d) |  |  |
| 32 | Enviar al pdf de la factura la descripción del método de pago y el código al xml | 2016-06-28 → 2016-11-17 (+142d) | 2016-06-29 → 2016-11-18 (+142d) |  |  |
| 33 | En el reporte de ventas incrementar el espacio para mostrar los totales en el resumen del reporte ya que no se ve la cantidad cuando es muy grande (millones) | 2016-08-02 → 2016-11-22 (+112d) | 2016-08-05 → 2016-11-25 (+112d) |  |  |
| 34 | Error numero de columnas no coincide con el numero de valores a insertar | 2016-07-13 → 2016-11-28 (+138d) | 2016-07-13 → 2016-11-28 (+138d) |  |  |
| 35 | Mostrar en el PDF de la factura el descuento. (PDF 1,2,3,5 decimales) | 2016-07-24 → 2016-11-29 (+128d) | 2016-07-26 → 2016-12-01 (+128d) |  |  |
| 36 | Agregar en el xml en el domicilio del Receptor el Codigo Postal | 2016-07-22 → 2016-12-05 (+136d) | 2016-07-26 → 2016-12-09 (+136d) |  |  |
| 37 | Que al momento de obtener un reporte de encabezados o en un reporte nuevo, nos diga los ticket que ya están facturados y con qué número y que se pueda obtener detallado o totalizado por documento | 2016-07-27 → 2016-12-09 (+135d) | 2016-07-28 → 2016-12-10 (+135d) |  |  |
| 38 | Que al momento de seleccionar ticket para facturar te dé un total previo para validar con lo que se quiere facturar. | 2016-08-02 → 2016-12-13 (+133d) | 2016-08-05 → 2016-12-16 (+133d) |  |  |
| 39 | Mostrar en el PDF de la factura el descuento. (PDF 0,4,6 decimales) | 2016-07-01 → 2016-12-19 (+171d) | 2016-07-23 → 2017-01-12 (+173d) |  |  |
| 40 | Que al momento de obtener un reporte de encabezados o en un reporte nuevo, nos diga los ticket que ya están facturados y con qué número y que se pueda obtener detallado o totalizado por documento | 2016-08-02 → 2017-01-16 (+167d) | 2016-08-05 → 2017-01-19 (+167d) |  |  |
| 41 | Desarrollos de interfaces para bases de datos de Contpaqi Contabilidad | 2015-11-27 → 2016-11-07 (+346d) | 2015-12-17 → 2016-12-05 (+354d) | 20d → 28d |  |
| 42 | Implementación de JD entre ERA - Contabilidad | 2015-12-07 → 2015-12-06 (-1d) | 2015-12-07 → 2015-12-09 (+2d) | 1d → 4d |  |
| 44 | Implementación de JD entre ERA - Bancos | 2015-12-07 → 2017-01-10 (+400d) | 2015-12-07 → 2017-01-16 (+406d) | 1d → 7d | 100% → 0% |
| 45 | **Segunda Etapa de desarrollo personalizado para base Easy Retail Admin** | 2016-08-04 → 2017-01-19 (+168d) | 2016-11-16 → 2017-04-19 (+154d) | 104d → 91d | 44% → 38% |
| 46 | Habilitar en el reporte de antigüedad de saldos el filtro por serie-documento | 2016-08-08 → 2017-01-19 (+164d) | 2016-08-10 → 2017-01-21 (+164d) |  |  |
| 47 | En compras cuando se genere el JD, nos indique en la poliza el número de proveedor ademas de el número de la orden de compra | 2016-08-13 → 2017-01-24 (+164d) | 2016-08-15 → 2017-01-26 (+164d) |  |  |
| 48 | Agregar configuración para hacer obligatorio el campo de Activo y Cuenta Contable en los Pagos | 2016-08-04 → 2017-01-30 (+179d) | 2016-08-05 → 2017-01-31 (+179d) |  |  |
| 49 | Agregar el "Nombre de cliente", ademas del codigo, en los reportes de ventas | 2016-08-10 → 2017-02-01 (+175d) | 2016-08-19 → 2017-02-10 (+175d) |  |  |
| 50 | Revisar que al generar las pólizas no se generen con cuenta de cuadre | 2016-09-13 → 2017-02-13 (+153d) | 2016-09-13 → 2017-02-13 (+153d) |  |  |
| 51 | Revisar que se calcule correctamente el IVA cuando se facturan tickets | 2016-09-27 → 2017-02-13 (+139d) | 2016-09-27 → 2017-02-13 (+139d) |  |  |
| 52 | Crear un Query para que los tickets cancelados con anterioridad no se dupliquen | 2016-09-27 → 2017-02-14 (+140d) | 2016-09-27 → 2017-02-14 (+140d) |  |  |
| 53 | Reportes de antigüedad de saldos, debe filtrar por fechas para que permita ver el historial | 2016-09-13 → 2017-02-15 (+155d) | 2016-09-13 → 2017-02-15 (+155d) |  |  |
| 54 | Pruebas, crear un query para corregir las cxc que tienen doble registro en la tabla de cxc | 2016-09-13 → 2017-02-20 (+160d) | 2016-09-13 → 2017-02-20 (+160d) |  |  |
| 55 | se necesita un concepto de descuento esto para identificar los pagos de cartera | 2016-09-13 → 2017-03-20 (+188d) | 2016-09-13 → 2017-03-20 (+188d) |  |  |
| 56 | validar que al agregar mas de dos partidas no se calcule mal el importe | 2016-09-13 → 2017-03-27 (+195d) | 2016-09-13 → 2017-03-27 (+195d) |  |  |
| 57 | validar, al momento de capturar una compra respete la fecha que se captura en el registro, ocea la fecha de la factura1 | 2016-09-13 → 2017-03-29 (+197d) | 2016-09-13 → 2017-03-29 (+197d) |  |  |
| 58 | Crear mas de un asiento contable por serie para que permita la creación de una segunda poliza por evento, | 2016-09-13 → 2017-04-03 (+202d) | 2016-09-13 → 2017-04-03 (+202d) |  |  |
| 59 | validación, al agregar productos de un documento de compra a un factura que si baje los importes correctos, | 2016-11-11 → 2017-04-05 (+145d) | 2016-11-11 → 2017-04-05 (+145d) |  |  |
| 60 | Envio de correos al hacer las facturas de los tickets | 2016-11-16 → 2017-04-10 (+145d) | 2016-11-16 → 2017-04-12 (+147d) | 1d → 3d |  |
| 61 | el botón de timbrado debe hacer su función | 2014-08-01 → 2017-04-17 (+990d) | 2014-08-01 → 2017-04-19 (+992d) | 1d → 3d |  |

## Version 5 (saved 2016-12-27)

Note of the change: Merge branch 'master' of https://github.com/ricardo-novelasos/SOSQTP

Last finish stays 2017-04-19.

Changed:

| ID | Task | Start | Finish |
| --- | --- | --- | --- |
| 42 | Implementación de JD entre ERA - Contabilidad | 2015-12-06 → 2016-12-06 (+366d) | 2015-12-09 → 2016-12-09 (+366d) |
